# Projet GL

Schedule from Planner, 2012-01-03 to 2012-01-26.
Ensimag

## Calendars

- Default: Mon-Fri 09:00-12:45, 14:00-17:00; Sat-Sun off. Exceptions (off unless hours are given): 2012-01-05 to 2012-01-06 14:00-18:00, 2012-01-07 09:00-12:45, 14:00-17:00, 2012-01-08, 2012-01-09 to 2012-01-10 14:00-18:00, 2012-01-12 to 2012-01-15 09:00-12:45, 14:00-17:00, 2012-01-21 to 2012-01-22 09:00-12:45, 14:00-17:00.

## Resources

| Resource |
| --- |
| Sébastien Lentini |
| Thomas Nguy |
| Valentin Bousson |
| Cédric Connes |

## Schedule

| ID | WBS | Task | Type | Duration | Start | Finish | Predecessors | Complete | Constraint | Resources | Work |
| --- | --- | --- | --- | --- | --- | --- | --- | --- | --- | --- | --- |
| 1 | 1 | Mise en place |  |  | 2012-01-03 | 2012-01-04 |  | 100% |  | Sébastien Lentini; Thomas Nguy; Valentin Bousson; Cédric Connes | 54h |
| 2 | 2 | **Test suite** |  |  | 2012-01-05 | 2012-01-22 | 1 |  |  |  | 24.25h |
| 3 | 2.1 | Base |  |  | 2012-01-05 | 2012-01-09 |  | 100% |  | Valentin Bousson | 15.5h |
| 4 | 2.2 | Maintenance |  |  | 2012-01-09 | 2012-01-22 | 3 | 100% |  | Valentin Bousson [10%] | 8.75h |
| 5 | 3 | **Organisation** |  |  | 2012-01-05 | 2012-01-10 |  |  |  |  | 9h |
| 6 | 3.1 | Charte de travail |  |  | 2012-01-05 | 2012-01-09 | 1 | 100% |  | Sébastien Lentini [25%] | 4h |
| 7 | 3.2 | Planning prévisionnel |  |  | 2012-01-05 | 2012-01-10 | 1 | 100% |  | Sébastien Lentini [25%] | 5h |
| 8 | 4 | **Analyse lexicosyntaxique** |  |  | 2012-01-05 | 2012-01-09 | 1 | 100% |  |  | 38.25h |
| 9 | 4.1 | Lexeur |  |  | 2012-01-05 | 2012-01-07 |  | 100% |  | Thomas Nguy [50%]; Cédric Connes [50%] | 13.5h |
| 10 | 4.2 | Parseur |  |  | 2012-01-05 | 2012-01-07 |  | 100% |  | Sébastien Lentini [50%]; Thomas Nguy [50%]; Cédric Connes [50%] | 20.25h |
| 11 | 4.3 | Tests |  |  | 2012-01-07 | 2012-01-09 | 10, 9 | 100% |  | Thomas Nguy; Cédric Connes | 4.5h |
| 12 | 5 | SUIVI 1 (A/ORGANISATION/PREVISION) | milestone | 0d | 2012-01-11 | 2012-01-11 | 8, 5 |  | must start on 2012-01-11 |  |  |
| 13 | 6 | **Compilateur gérant Hello World** |  |  | 2012-01-09 | 2012-01-12 | 10, 9 |  |  |  | 26.35h |
| 14 | 6.1 | Analyse contextuelle |  |  | 2012-01-09 | 2012-01-10 |  | 100% | must start on 2012-01-09 | Thomas Nguy [80%]; Cédric Connes [80%] | 10.75h |
| 15 | 6.2 | Génération de code |  |  | 2012-01-09 | 2012-01-10 |  | 100% | must start on 2012-01-09 | Sébastien Lentini [65%]; Valentin Bousson [80%] | 11.6h |
| 16 | 6.3 | **Tests** |  |  | 2012-01-12 | 2012-01-12 |  |  |  | Cédric Connes [50%] | 4h |
| 17 | 6.3.1 | Boite blanche |  |  | 2012-01-12 | 2012-01-12 |  | 100% | must start on 2012-01-12 |  | 2h |
| 18 | 6.3.2 | Boite noire |  |  | 2012-01-12 | 2012-01-12 |  | 100% | must start on 2012-01-12 |  | 2h |
| 19 | 7 | **Compilateur sans objet** |  |  | 2012-01-11 | 2012-01-16 | 15, 14 |  |  |  | 125.5h |
| 20 | 7.1 | **Analyse contextuelle ss objet** |  |  | 2012-01-11 | 2012-01-12 |  |  |  |  | 17.5h |
| 21 | 7.1.1 | analyse |  |  | 2012-01-11 | 2012-01-12 |  | 100% |  | Thomas Nguy | 13.5h |
| 22 | 7.1.2 | gestion erreur |  |  | 2012-01-11 | 2012-01-12 |  | 100% |  | Cédric Connes [50%] | 4h |
| 23 | 7.2 | **Génération de code ss objet** |  |  | 2012-01-11 | 2012-01-14 |  |  |  |  | 67.5h |
| 24 | 7.2.1 | Print |  |  | 2012-01-11 | 2012-01-12 |  | 100% |  | Sébastien Lentini [50%]; Valentin Bousson [45%] | 6.75h |
| 25 | 7.2.2 | Litteraux |  |  | 2012-01-11 | 2012-01-12 |  | 100% |  | Sébastien Lentini [50%]; Valentin Bousson [45%] | 6.75h |
| 26 | 7.2.3 | op. arith/bool |  |  | 2012-01-12 | 2012-01-13 |  | 100% | must start on 2012-01-12 | Sébastien Lentini [50%]; Valentin Bousson [45%] | 6.75h |
| 27 | 7.2.4 | Input |  |  | 2012-01-12 | 2012-01-13 |  | 100% | must start on 2012-01-12 | Sébastien Lentini [50%]; Valentin Bousson [45%] | 6.75h |
| 28 | 7.2.5 | variable |  |  | 2012-01-14 | 2012-01-14 |  | 100% | must start on 2012-01-14 | Sébastien Lentini; Valentin Bousson [90%]; Cédric Connes | 13.5h |
| 29 | 7.2.6 | Struct controle |  |  | 2012-01-13 | 2012-01-14 |  | 100% | must start on 2012-01-13 | Sébastien Lentini; Valentin Bousson [90%] | 13.5h |
| 30 | 7.2.7 | Gestion Registre |  |  | 2012-01-13 | 2012-01-14 |  | 100% | must start on 2012-01-13 | Cédric Connes | 13.5h |

| ID | WBS | Task | Type | Duration | Start | Finish | Predecessors | Complete | Constraint | Resources | Work |
| --- | --- | --- | --- | --- | --- | --- | --- | --- | --- | --- | --- |
| 31 | 7.3 | **Tests** |  |  | 2012-01-13 | 2012-01-14 |  |  |  |  | 13.5h |
| 32 | 7.3.1 | Boite blanche |  |  | 2012-01-13 | 2012-01-13 | 20 | 100% |  | Thomas Nguy | 6.75h |
| 33 | 7.3.2 | Boite noire |  |  | 2012-01-14 | 2012-01-14 |  | 100% | must start on 2012-01-14 | Thomas Nguy | 6.75h |
| 34 | 7.4 | Documentation |  |  | 2012-01-15 | 2012-01-16 |  | 100% | must start on 2012-01-15 | Sébastien Lentini; Thomas Nguy; Valentin Bousson [90%]; Cédric Connes | 27h |
| 35 | 8 | Rendu version intermédiaire | milestone | 0d | 2012-01-16 | 2012-01-16 | 19 |  | must start on 2012-01-16 |  |  |
| 36 | 9 | **Compilateur pour la totalité du langage** |  |  | 2012-01-16 | 2012-01-22 | 19 |  |  |  | 153.25h |
| 37 | 9.1 | **Analyse contextuelle totalité** |  |  | 2012-01-16 | 2012-01-19 |  |  | must start on 2012-01-16 |  | 15h |
| 38 | 9.1.1 | passe 1 |  |  | 2012-01-16 | 2012-01-17 |  | 100% | must start on 2012-01-16 | Thomas Nguy [50%] | 4h |
| 39 | 9.1.2 | passe 2 |  |  | 2012-01-17 | 2012-01-18 |  | 100% | must start on 2012-01-17 | Thomas Nguy [50%] | 5h |
| 40 | 9.1.3 | passe 3 |  |  | 2012-01-18 | 2012-01-19 |  | 100% | must start on 2012-01-18 | Thomas Nguy [50%] | 6h |
| 41 | 9.2 | **Génération de code totalité** |  |  | 2012-01-16 | 2012-01-19 |  |  | must start on 2012-01-16 |  | 70.75h |
| 42 | 9.2.1 | Amélioration gestion registres |  |  | 2012-01-16 | 2012-01-17 |  | 100% |  | Cédric Connes [60%] | 5h |
| 43 | 9.2.2 | gencode No check |  |  | 2012-01-16 | 2012-01-17 |  | 100% |  | Valentin Bousson [40%]; Cédric Connes [30%] | 5h |
| 44 | 9.2.3 | Table méthode |  |  | 2012-01-16 | 2012-01-16 |  | 100% |  | Sébastien Lentini [70%]; Valentin Bousson [40%] | 6.75h |
| 45 | 9.2.4 | méthode |  |  | 2012-01-17 | 2012-01-19 |  | 100% | must start on 2012-01-17 | Sébastien Lentini [35%]; Valentin Bousson [35%]; Cédric Connes [45%] | 20.25h |
| 46 | 9.2.5 | attributs |  |  | 2012-01-17 | 2012-01-19 |  | 100% | must start on 2012-01-17 | Sébastien Lentini [35%]; Valentin Bousson [35%]; Cédric Connes [45%] | 20.25h |
| 47 | 9.2.6 | class |  |  | 2012-01-19 | 2012-01-19 |  | 100% | must start on 2012-01-19 | Sébastien Lentini [70%]; Valentin Bousson [80%]; Cédric Connes [90%] | 13.5h |
| 48 | 9.3 | Tests |  |  | 2012-01-16 | 2012-01-22 |  | 100% | must start on 2012-01-16 | Sébastien Lentini [30%]; Thomas Nguy [50%]; Valentin Bousson [10%]; Cédric Connes [10%] | 47.25h |
| 49 | 9.4 | Documentation |  |  | 2012-01-19 | 2012-01-21 |  | 100% | must start on 2012-01-19 | Sébastien Lentini [25%]; Thomas Nguy [25%]; Valentin Bousson [25%]; Cédric Connes [25%] | 20.25h |
| 50 | 10 | **Compilateur maxi deca** |  |  | 2012-01-19 | 2012-01-24 | 37, 41 |  |  |  | 74.25h |
| 51 | 10.1 | Analyse contextuelle |  |  | 2012-01-19 | 2012-01-21 |  | 100% |  | Thomas Nguy [75%] | 6.75h |
| 52 | 10.2 | Génération de code |  |  | 2012-01-19 | 2012-01-21 |  | 100% |  | Valentin Bousson [75%]; Cédric Connes [75%] | 13.5h |
| 53 | 10.3 | **Tests** |  |  | 2012-01-19 | 2012-01-22 |  |  |  |  | 47.25h |
| 54 | 10.3.1 | Test |  |  | 2012-01-19 | 2012-01-21 |  | 100% |  | Sébastien Lentini [75%] | 6.75h |
| 55 | 10.3.2 | Tests finaux |  |  | 2012-01-21 | 2012-01-22 |  | 100% | must start on 2012-01-21 | Sébastien Lentini; Thomas Nguy; Valentin Bousson; Cédric Connes | 40.5h |
| 56 | 10.4 | doc concept, bilan .. |  |  | 2012-01-24 | 2012-01-24 |  |  | must start on 2012-01-24 | Sébastien Lentini; Thomas Nguy; Valentin Bousson; Cédric Connes | 6.75h |
| 57 | 11 | DEAD LINE | milestone | 0d | 2012-01-21 | 2012-01-21 |  |  | must start on 2012-01-21 |  |  |
| 58 | 12 | Rendu Final | milestone | 0d | 2012-01-23 | 2012-01-23 |  |  | must start on 2012-01-23 |  |  |
| 59 | 13 | Rendu documentation | milestone | 0d | 2012-01-23 | 2012-01-23 |  |  | must start on 2012-01-23 |  |  |
| 60 | 14 | Rendu Bilan | milestone | 0d | 2012-01-25 | 2012-01-25 |  |  | must start on 2012-01-25 |  |  |
| 61 | 15 | Soutenance | milestone | 0d | 2012-01-26 | 2012-01-26 |  |  | must start on 2012-01-26 |  |  |
